# POSV41 Schedule

Schedule from MS Project, 2003-11-20 to 2004-09-23, A marks actual dates.
EAI

## Calendars

- 标准: Mon-Fri 08:00-12:00, 13:00-17:00; Sat-Sun off.

## Resources

| Resource |
| --- |
| 梁欣标 |
| POS V4项目组 |
| 黄雪安 |
| 李超 |

## Schedule

| ID | WBS | Task | Duration | Start | Finish | Predecessors | Complete | Remaining | Total slack | Constraint | Resources | Work | Actual work |
| --- | --- | --- | --- | --- | --- | --- | --- | --- | --- | --- | --- | --- | --- |
| 1 | 1 | **POS Version 41 Project** | 221d? | 2003-11-20 A | 2004-09-23 |  | 73% | 60.27d? | 0d |  | POS V4项目组 | 1024h | 576h |
| 2 | 1.1 | 单品折扣 | 2d? | 2004-07-19 A | 2004-07-20 A |  | 100% |  |  | finish no earlier than 2004-07-20 | 黄雪安 | 16h | 16h |
| 3 | 1.2 | 总额折扣 | 1d? | 2004-07-21 A | 2004-07-21 A | 2 | 100% |  |  |  | 黄雪安 | 8h | 8h |
| 4 | 1.3 | 金额折扣 | 2d? | 2004-07-22 A | 2004-07-23 A | 3 | 100% |  |  |  | 黄雪安 | 16h | 16h |
| 5 | 1.4 | 现金热键 | 3d? | 2004-07-26 A | 2004-07-28 A | 4 | 100% |  |  |  | 黄雪安 | 24h | 24h |
| 6 | 1.5 | 支票支付修改为必须录入支票号码 | 1d? | 2004-07-29 A | 2004-07-29 A | 5 | 100% |  |  |  | 黄雪安 | 8h | 8h |
| 7 | 1.6 | POS机启动时自动启动POS程序 | 3d? | 2004-07-30 | 2004-08-03 | 6 |  |  | 32d | start no earlier than 2004-07-30 | 黄雪安 | 24h |  |
| 8 | 1.7 | 自动锁机 | 2d? | 2004-08-04 A | 2004-08-05 A | 7 | 100% |  |  | finish no earlier than 2004-08-03 | 黄雪安 | 16h | 16h |
| 9 | 1.8 | 营业员输入 | 3d? | 2004-07-19 A | 2004-07-21 A |  | 100% |  |  | finish no earlier than 2004-07-21 | 李超 | 24h | 24h |
| 10 | 1.9 | 合计 | 1d? | 2004-07-22 A | 2004-07-22 A | 9 | 100% |  |  | finish no earlier than 2004-07-22 | 李超 | 8h | 8h |
| 11 | 1.10 | 按光标位置更正 | 1d | 2004-07-23 A | 2004-07-23 A |  | 100% |  |  | finish no earlier than 2004-07-23 | 李超 | 8h | 8h |
| 12 | 1.11 | 在界面上显示商品编码 | 0.5d | 2004-07-26 A | 2004-07-26 A | 11 | 100% |  |  |  | 李超 | 4h | 4h |
| 13 | 1.12 | 重打上一单 | 3.5d | 2004-07-26 A | 2004-07-29 A |  | 100% |  |  | finish no earlier than 2004-07-29 | 李超 | 28h | 28h |
| 14 | 1.13 | 现金控制（当钱箱里的钱超出某个上限时不与允许销售，只能出款） | 1d? | 2004-07-30 A | 2004-07-30 A | 13 | 100% |  |  |  | 李超 | 8h | 8h |
| 15 | 1.14 | 除现金、代币卷外的其他支付方式不打开钱箱 | 0.5d? | 2004-08-02 A | 2004-08-02 A | 14 | 100% |  |  |  | 李超 | 4h | 4h |
| 16 | 1.15 | 银行卡支付（不允许支付大于应收金额） | 0.5d? | 2004-08-02 A | 2004-08-02 A | 15 | 100% |  |  | start no earlier than 2004-08-02 | 李超 | 4h | 4h |
| 17 | 1.16 | 日志 | 3d? | 2004-08-03 A | 2004-08-05 A | 16, 18 | 100% |  |  | finish no earlier than 2004-08-05 | 李超 | 24h | 24h |
| 18 | 1.17 | 查询价格 | 1d | 2004-08-06 A | 2004-08-06 A | 17, 16 | 100% |  |  | start no earlier than 2004-08-04 | 李超 | 8h | 8h |
| 19 | 1.18 | IC卡支付 | 3d? | 2004-07-19 A | 2004-07-21 A |  | 100% |  |  | start no earlier than 2004-07-19 | 梁欣标 | 24h | 24h |
| 20 | 1.19 | IBM4810 POS机的支持 | 3d? | 2004-07-19 A | 2004-07-21 A |  | 100% |  |  | start no earlier than 2004-07-19 | 梁欣标 | 24h | 24h |
| 21 | 1.20 | 培训模式（此时不打开钱箱） | 2d? | 2004-07-22 A | 2004-07-23 A | 20 | 100% |  |  | finish no earlier than 2004-07-23 | 梁欣标 | 16h | 16h |
| 22 | 1.21 | 组合促销显示方案名称 | 1d? | 2004-07-26 A | 2004-07-26 A | 21 | 100% |  |  |  | 梁欣标 | 8h | 8h |
| 23 | 1.22 | 打印总共的优惠金额 | 1d? | 2004-07-27 A | 2004-07-27 A | 22 | 100% |  |  |  | 梁欣标 | 8h | 8h |
| 24 | 1.23 | 班结后下载脱机资料 | 2d? | 2004-07-28 A | 2004-07-29 A | 23 | 100% |  |  | start no earlier than 2004-07-28 | 梁欣标 | 16h | 16h |
| 25 | 1.24 | 程序同步更新 | 2d? | 2004-07-30 A | 2004-08-02 A | 24 | 100% |  |  | finish no earlier than 2004-08-02 | 梁欣标 | 16h | 16h |
| 26 | 1.25 | 联机查价 | 3d | 2004-08-03 A | 2004-08-05 A | 25 | 100% |  |  | finish no earlier than 2004-08-05 | 梁欣标 | 24h | 24h |
| 27 | 1.26 | 联单机状态切换 | 1d | 2004-08-06 A | 2004-08-06 A | 26 | 100% |  |  |  | 梁欣标 | 8h | 8h |

| ID | WBS | Task | Duration | Start | Finish | Predecessors | Complete | Remaining | Total slack | Free slack | Constraint | Resources | Work | Actual work |
| --- | --- | --- | --- | --- | --- | --- | --- | --- | --- | --- | --- | --- | --- | --- |
| 28 | 1.27 | **20040903紧急事件处理** | 8d? | 2004-09-07 A | 2004-09-16 |  | 90% | 0.8d? | 4d |  |  |  | 96h | 88h |
| 29 | 1.27.1 | 在滘口的POS机POO1 8月23日和9月2日的脱机流水在9月6才上传 + 在泛亚的POS机POO2 9月6日第一班的流水没上传 | 2d | 2004-09-07 A | 2004-09-08 A |  | 100% |  |  |  | start no earlier than 2004-09-07 | 梁欣标 | 16h | 16h |
| 30 | 1.27.2 | 在滘口挂账卡主账户累计消费为负数 + 在滘口挂账卡子卡余额正，理论上应为负或为0 | 1d | 2004-09-07 A | 2004-09-07 A |  | 100% |  |  |  | start no earlier than 2004-09-07 | 黄雪安 | 8h | 8h |
| 31 | 1.27.3 | 整单取消不能使用，没有提示 | 1d | 2004-09-08 A | 2004-09-08 A |  | 100% |  |  |  | start no earlier than 2004-09-08 | 黄雪安 | 8h | 8h |
| 32 | 1.27.4 | 在POS客户端加入 Logging，记录POS客户端重要工作情况 | 2d | 2004-09-09 A | 2004-09-10 A |  | 100% |  |  |  | start no earlier than 2004-09-09 | 梁欣标 | 16h | 16h |
| 33 | 1.27.5 | 交班后，只能录入密码和班次，但不能录入用户名 | 1d | 2004-09-10 A | 2004-09-10 A |  | 100% |  |  |  |  | 梁欣标 | 8h | 8h |
| 34 | 1.27.6 | 到窖口和泛亚油站现场跟踪 | 1d | 2004-09-15 A | 2004-09-15 A |  | 100% |  |  |  | start no earlier than 2004-09-15 | 梁欣标; 黄雪安; 李超 | 24h | 24h |
| 35 | 1.27.7 | 窖口油站，2004/09/14的B,C两班的正常销售流水全部都传到了重复流水表中。 | 1d? | 2004-09-16 | 2004-09-16 |  |  |  | 4d |  | start no earlier than 2004-09-16 | 梁欣标 | 8h |  |
| 36 | 1.27.8 | 挂帐客户油品优惠报表所需的POS修改 | 1d | 2004-09-16 A | 2004-09-16 A |  | 100% |  |  |  | start no earlier than 2004-09-16 | 李超 | 8h | 8h |
| 37 | 1.28 | 与油机相连 | 6d? | 2003-11-20 | 2003-11-27 |  |  |  | 210d |  |  | 梁欣标 | 48h |  |
| 38 | 1.29 | 挂账卡优惠 | 2d? | 2004-09-06 A | 2004-09-07 A |  | 100% |  |  |  | finish no earlier than 2004-09-07 | 李超 | 16h | 16h |
| 39 | 1.30 | 地磅 | 1d? | 2004-09-08 | 2004-09-08 | 38 |  |  | 5d | 0d |  | 李超 | 8h |  |
| 40 | 1.31 | 汽车美容 | 1d? | 2004-09-09 | 2004-09-09 | 39 |  |  | 5d |  |  | 李超 | 8h |  |
| 41 | 1.32 | 基本码实现 | 1d | 2004-09-10 A | 2004-09-10 A | 40 | 100% |  |  |  |  | 李超 | 8h | 8h |
| 42 | 1.33 | 安装程序制作 | 2d? | 2004-09-06 | 2004-09-07 |  |  |  | 4d | 0d | finish no earlier than 2004-09-07 | 黄雪安 | 16h |  |
| 43 | 1.34 | 文档编写 | 3d? | 2004-09-08 | 2004-09-10 | 42 |  |  | 4d |  |  | 黄雪安 | 24h |  |
| 44 | 1.35 | **20040922计划** | 2d? | 2004-09-22 | 2004-09-23 |  |  |  | 0d |  |  |  | 32h |  |
| 45 | 1.35.1 | 登陆时改为流水号取服务器和本地的大值 | 1d? | 2004-09-22 | 2004-09-22 |  |  |  | 1d |  | start no earlier than 2004-09-22 | 梁欣标 | 8h |  |
| 46 | 1.35.2 | 将每次接收输入时清除缓冲区改为只在登陆时清 | 1d? | 2004-09-22 | 2004-09-22 |  |  |  | 1d |  | start no earlier than 2004-09-22 | 梁欣标 | 8h |  |
| 47 | 1.35.3 | 上传了的流水在本地做记录 | 2d? | 2004-09-22 | 2004-09-23 |  |  |  | 0d |  | finish no earlier than 2004-09-23 | 梁欣标 | 16h |  |

Notes:
- 36: 昨天讨论的一个挂帐卡客户优惠报表需要通过销售流水进行统计，而在现有的POS实现挂帐客户油品优惠功能的销售流水（sale_j）中，单价(price)是记录（原单价-油品优惠额度），销售金额(salevalue)是实际录入的金额（即是优惠后的金额），优惠金额（discvalue）是记为0，这样无法统计挂帐客户油品优惠的报表。现需要需要调整销售的记录还是按原来通过变价的销售流水一样，同时销售流水的折扣类型disctype也新增一个标志类型，以方便区分。
