# 小店连锁技术平台迭代1项目计划

Schedule from MS Project, 2005-05-08 to 2005-06-17, A marks actual dates.
广州融通系统集成有限公司
(C) 1997-2005，融通公司绝密文件。扩散该文件将触犯员工保密协议，并可能招致一切可能的法律惩罚。电话：020-22221188 传真：020-82529469 电子邮件：corp@royalstone.com.cn

## Calendars

- Standard: Mon-Fri 08:00-12:00, 13:00-17:00; Sat-Sun off. Exceptions (off unless hours are given): 2005-05-08 08:00-12:00, 13:00-17:00.

## Resources

| Resource |
| --- |
| 梁欣标 |
| 姚颇清 |
| 伍炳焰 |
| 曹宇山 |
| 曾嘉良 |

## Schedule

| ID | WBS | Task | Type | Duration | Start | Finish | Predecessors | Complete | Remaining | Total slack | Free slack | Constraint | Resources | Work | Actual work |
| --- | --- | --- | --- | --- | --- | --- | --- | --- | --- | --- | --- | --- | --- | --- | --- |
| 1 | 1 | **Project Management** |  | 31d? | 2005-05-08 A | 2005-06-17 |  | 3% | 30.06d? | 0d |  |  |  | 260h | 4h |
| 2 | 1.1 | **项目计划** |  | 1d | 2005-05-08 A | 2005-05-08 A |  | 100% |  |  |  |  |  | 4h | 4h |
| 3 | 1.1.1 | 编写项目计划 |  | 1d | 2005-05-08 A | 2005-05-08 A |  | 100% |  |  |  | start no earlier than 2005-03-15 | 梁欣标 | 4h | 4h |
| 4 | 1.2 | 项目启动 | milestone | 0d | 2005-05-08 | 2005-05-08 |  |  |  | 31d |  | start no earlier than 2005-05-08 |  |  |  |
| 5 | 1.3 | **设计与编码工作** |  | 28d? | 2005-05-09 | 2005-06-15 |  |  |  | 0d |  |  |  | 240h |  |
| 6 | 1.3.1 | **特定于BPPC的功能修改** |  | 8d? | 2005-05-09 | 2005-05-18 |  |  |  | 20d |  |  |  | 80h |  |
| 7 | 1.3.1.1 | 删除挂单对话框中的油品一列 |  | 1d? | 2005-05-09 | 2005-05-09 |  |  |  | 27d |  | start no earlier than 2005-05-09 | 姚颇清 | 8h |  |
| 8 | 1.3.1.2 | 删除班结功能和相关的班次信息 |  | 1d | 2005-05-09 | 2005-05-09 |  |  |  | 26d | 0d | start no earlier than 2005-05-09 | 姚颇清 | 8h |  |
| 9 | 1.3.1.3 | 删除实时调价功能 |  | 1d? | 2005-05-10 | 2005-05-10 | 8 |  |  | 26d |  | start no earlier than 2005-05-09 | 姚颇清 | 8h |  |
| 10 | 1.3.1.4 | 将联机的查价方式修改为每次从服务器里查 |  | 2d? | 2005-05-10 | 2005-05-11 |  |  |  | 20d | 0d | finish no earlier than 2005-05-11 | 姚颇清 | 16h |  |
| 11 | 1.3.1.5 | 增加即更功能 |  | 1d? | 2005-05-12 | 2005-05-12 | 10 |  |  | 20d | 0d |  | 姚颇清 | 8h |  |
| 12 | 1.3.1.6 | 修改授权时根据各个功能的参数确定是否每次都弹出授权窗口 |  | 1d? | 2005-05-13 | 2005-05-13 | 11 |  |  | 20d | 0d |  | 姚颇清 | 8h |  |
| 13 | 1.3.1.7 | 修改硬件配置参数从服务器里下载 |  | 1d? | 2005-05-16 | 2005-05-16 | 12 |  |  | 20d | 0d |  | 姚颇清 | 8h |  |
| 14 | 1.3.1.8 | 修改支持80000条商品资料的下载 |  | 2d? | 2005-05-17 | 2005-05-18 | 13 |  |  | 20d |  |  | 姚颇清 | 16h |  |
| 15 | 1.3.2 | **会员卡相关功能** |  | 6d? | 2005-05-19 | 2005-05-26 |  |  |  | 14d |  |  |  | 48h |  |
| 16 | 1.3.2.1 | 增加会员卡刷卡功能 |  | 2d? | 2005-05-19 | 2005-05-20 |  |  |  | 14d | 0d | start no earlier than 2005-05-19 | 姚颇清 | 16h |  |
| 17 | 1.3.2.2 | 增加会员积分功能包括退货情况的减积分和打印积分功能 |  | 2d? | 2005-05-23 | 2005-05-24 | 16 |  |  | 14d | 0d | finish no earlier than 2005-05-17 | 姚颇清 | 16h |  |
| 18 | 1.3.2.3 | 增加会员整类折扣 |  | 2d? | 2005-05-25 | 2005-05-26 | 17 |  |  | 14d |  | finish no earlier than 2005-05-19 | 姚颇清 | 16h |  |
| 19 | 1.3.3 | **促销相关的功能** |  | 2d? | 2005-05-27 | 2005-05-30 |  |  |  | 12d |  |  |  | 16h |  |
| 20 | 1.3.3.1 | 增加削价商品的支持 |  | 1d? | 2005-05-27 | 2005-05-27 |  |  |  | 12d | 0d | start no earlier than 2005-05-27 | 姚颇清 | 8h |  |
| 21 | 1.3.3.2 | 增加捆绑商品的支持 |  | 1d? | 2005-05-30 | 2005-05-30 | 20 |  |  | 12d |  |  | 姚颇清 | 8h |  |
| 22 | 1.3.4 | **储值卡相关的功能** |  | 6d? | 2005-06-01 | 2005-06-08 |  |  |  | 5d |  |  |  | 56h |  |
| 23 | 1.3.4.1 | 储值卡消费 |  | 3d | 2005-06-01 | 2005-06-03 |  |  |  | 5d | 0d | start no earlier than 2005-06-01 | 姚颇清 | 24h |  |
| 24 | 1.3.4.2 | 储值卡退货 |  | 1d? | 2005-06-06 | 2005-06-06 | 23 |  |  | 5d | 0d |  | 姚颇清 | 8h |  |
| 25 | 1.3.4.3 | 储值卡余额查询 |  | 1d? | 2005-06-07 | 2005-06-07 | 24 |  |  | 5d | 0d |  | 姚颇清 | 8h |  |
| 26 | 1.3.4.4 | 储值卡冲正 |  | 1d? | 2005-06-08 | 2005-06-08 | 25 |  |  | 5d |  |  | 姚颇清 | 8h |  |
| 27 | 1.3.4.5 | 储值卡回收 |  | 1d? | 2005-06-08 | 2005-06-08 |  |  |  | 5d |  | start no earlier than 2005-06-08 | 姚颇清 | 8h |  |

| ID | WBS | Task | Type | Duration | Start | Finish | Predecessors | Total slack | Constraint | Resources | Work |
| --- | --- | --- | --- | --- | --- | --- | --- | --- | --- | --- | --- |
| 28 | 1.3.5 | **硬件相关的驱动** |  | 5d? | 2005-06-09 | 2005-06-15 |  | 0d |  |  | 40h |
| 29 | 1.3.5.1 | 沧州富达所用型号的POS机相应顾显、钱箱、打印机、扫描抢的相应的驱动开发 |  | 5d? | 2005-06-09 | 2005-06-15 |  | 0d | start no earlier than 2005-06-09 | 姚颇清 | 40h |
| 30 | 1.4 | 集成测试 |  | 2d | 2005-06-16 | 2005-06-17 | 5 | 0d |  | 姚颇清 | 16h |
| 31 | 1.5 | 沧州富达POS40部分完成 | milestone | 0d | 2005-06-17 | 2005-06-17 |  | 1d | start no earlier than 2005-06-17 |  |  |
